# Enhancement of electric cars users mobillty in Serbia

Schedule from MS Project, 2020-05-04 to 2023-05-04, costs in €.
IT and Energy sector
Etf

## Calendars

- Standard: Mon-Fri 08:00-12:00, 13:00-17:00; Sat-Sun off.

## Resources

| Resource | Group | Rate |
| --- | --- | --- |
| Petar Petrovic | ETF | 9 |
| Jana Sailovic | ETF | 9 |
| Tamara Sekularac | ETF | 9.81 |
| Giordano Raci | POLITOR | 17.31 |
| Zaharije Radivojevic | ETF | 9.81 |
| Federica Capelluti | POLITOR | 17.31 |
| Johan Baeck | BAK | 24.23 |
| Gunnar Aarstand | BAK | 24 |
| Garry Taichman | ENX | 17.31 |
| David Schlossberg | ENX | 17.31 |
| Mikko Marcio | ABB | 35.77 |
| Siegurd Muller | VMC | 20.77 |
| Paul Hermat | BIRD | 28.85 |
| Geralind Arbalt | BIRD | 28.85 |
| Jasmina Uzelac | ETF | 9.81 |
| Filip Hadzic | ETF | 9.81 |
| Milos Cvetanovic | ETF | 9.81 |
| Drazen Draskovic | ETF | 9.81 |
| Dietrich Muller | VMC | 20.77 |
| Johan Schwarzman | VMC | 20.77 |
| Michael Muller | VMC | 20.77 |
| Helmuth Kole | VMC | 20.77 |
| Lucio Visconti | POLITOR | 17.31 |
| Finn Assink | BIRD | 28.85 |
| Lucas Baeert | BIRD | 28.85 |
| John Whiteberg | ENX | 17.31 |
| Nick Johnson | ENX | 17.31 |
| Johan Guttenbaum | ABB | 35.77 |
| Alphonse LaMartine | ABB | 35.77 |
| Jacquies Lehmans | ABB | 35.77 |
| Nikolas Schweinsteiger | ABB | 35.77 |
| Mike van Diem | BAK | 24 |
| Rijk de Gooye | BAK | 24 |
| Simo Häyhä | TIE | 21.92 |
| Eero Saarinen | TIE | 21.92 |
| Urho Kekkonen | TIE | 21.92 |
| Tarja Halonen | TIE | 21.92 |
| ETF putovanje |  |  |
| VMC putovanje |  |  |
| POLITOR putovanje |  |  |
| TIE putovanje |  |  |
| BAK putovanje |  |  |
| ABB putovanje |  |  |
| ENX putovanje |  |  |
| BIRD putovanje |  |  |
| Revizija |  |  |
| Subcontracting |  |  |
| Other goods and services |  |  |
| Laptop |  | 1700 |
| Charger |  | 50000 |
| Power equipment |  | 120000 |
| HVAC plumbing fire protection |  | 44000 |
| Monitoring security and core networking |  |  |
| Projektor |  | 2000 |
| Telefon |  | 800 |
| Stampac |  | 1000 |
| Oprema za testiranje |  | 100000 |

## Schedule

| ID | WBS | Task | Duration | Start | Finish | Predecessors | Total slack | Free slack | Resources | Work | Cost |
| --- | --- | --- | --- | --- | --- | --- | --- | --- | --- | --- | --- |
| 1 | 1 | **Upravljanje projektom** | 783.12d | 2020-05-04 | 2023-05-04 |  | 0d |  | Other goods and services [0.1%]; Laptop [1000%]; Projektor [600%]; Telefon [500%]; Stampac [200%] | 12888h | 846,574.48 |
| 2 | 1.1 | **Definisanje obima posla** | 9d | 2020-05-04 | 2020-05-14 |  | 51.12d |  |  | 168h | 1,570.32 |
| 3 | 1.1.1 | Usvajanje projektnih ciljeva | 3d | 2020-05-04 | 2020-05-06 |  | 51.12d | 0d | Petar Petrovic; Jasmina Uzelac | 48h | 451.44 |
| 4 | 1.1.2 | Usvajanje projektnih izlaza i prekretnica | 2d | 2020-05-07 | 2020-05-08 | 3 | 51.12d | 0d | Jana Sailovic; Jasmina Uzelac | 32h | 300.96 |
| 5 | 1.1.3 | Usvajanje kriterijuma uspeha | 1d | 2020-05-11 | 2020-05-11 | 4 | 51.12d | 0d | Petar Petrovic; Jasmina Uzelac | 16h | 150.48 |
| 6 | 1.1.4 | Usvajanje projektnih ogranicenja i pretpostavki | 1d | 2020-05-11 | 2020-05-11 | 5SS | 51.12d | 0d | Jana Sailovic | 8h | 72 |
| 7 | 1.1.5 | Uvid u finansijska ogranicenja i procenu troskova | 1d | 2020-05-12 | 2020-05-12 | 6 | 51.12d | 0d | Petar Petrovic; Jana Sailovic; Jasmina Uzelac | 24h | 222.48 |
| 8 | 1.1.6 | Odredjivanje datuma prekretnica | 1d | 2020-05-13 | 2020-05-13 | 7 | 51.12d | 0d | Jana Sailovic; Jasmina Uzelac | 16h | 150.48 |
| 9 | 1.1.7 | Odredjivanje datum isporuke delova proizvoda | 1d | 2020-05-14 | 2020-05-14 | 8 | 51.12d | 0d | Petar Petrovic; Jana Sailovic; Jasmina Uzelac | 24h | 222.48 |
| 10 | 1.2 | **Pravljene dijagrama** | 4d | 2020-05-15 | 2020-05-20 |  | 51.12d |  |  | 64h | 576 |
| 11 | 1.2.1 | Aktivnosti | 2d | 2020-05-15 | 2020-05-18 | 9 | 51.12d | 0d | Jana Sailovic; Petar Petrovic | 32h | 288 |
| 12 | 1.2.2 | Podaktivnosti | 2d | 2020-05-19 | 2020-05-20 | 11 | 51.12d | 0d | Jana Sailovic; Petar Petrovic | 32h | 288 |
| 13 | 1.3 | **Planiranje resursa** | 5d | 2020-05-21 | 2020-05-27 |  | 51.12d |  |  | 80h | 752.4 |
| 14 | 1.3.1 | Ljudskih resursa | 2d | 2020-05-21 | 2020-05-22 | 12 | 51.12d | 0d | Jana Sailovic; Jasmina Uzelac | 32h | 300.96 |
| 15 | 1.3.2 | Opreme | 2d | 2020-05-25 | 2020-05-26 | 14 | 51.12d | 0d | Petar Petrovic; Jasmina Uzelac | 32h | 300.96 |
| 16 | 1.3.3 | Materijala | 1d | 2020-05-27 | 2020-05-27 | 15 | 51.12d | 0d | Jana Sailovic; Jasmina Uzelac | 16h | 150.48 |
| 17 | 1.4 | Formiranje budzeta | 4d | 2020-05-28 | 2020-06-02 | 16 | 51.12d | 0d | Jana Sailovic; Petar Petrovic; Jasmina Uzelac | 96h | 889.92 |
| 18 | 1.5 | **Upravljanje nabavkama** | 18d | 2020-06-03 | 2020-06-26 |  | 51.12d |  |  | 312h | 2,918.16 |
| 19 | 1.5.1 | **Biranje Vendora** | 4d | 2020-06-03 | 2020-06-08 |  | 51.12d |  |  | 88h | 817.92 |
| 20 | 1.5.1.1 | Identifikacija potencijalnih vendora | 1d | 2020-06-03 | 2020-06-03 | 17 | 51.12d | 0d | Jana Sailovic; Jasmina Uzelac | 16h | 150.48 |
| 21 | 1.5.1.2 | Odredjivanje tima za nabavke | 2d | 2020-06-04 | 2020-06-05 | 20 | 51.12d | 0d | Petar Petrovic | 16h | 144 |
| 22 | 1.5.1.3 | Odredjivanje strategije nabavke | 2d | 2020-06-04 | 2020-06-05 | 21SS | 758.12d |  | Jana Sailovic | 16h | 144 |
| 23 | 1.5.1.4 | Ustanoviti kriterijume selekcije | 2d | 2020-06-04 | 2020-06-05 | 21SS | 51.12d | 0d | Jasmina Uzelac | 16h | 156.96 |
| 24 | 1.5.1.5 | Odgovoriti na pitanja vendora | 1d | 2020-06-08 | 2020-06-08 | 23 | 51.12d | 0d | Jana Sailovic; Petar Petrovic; Jasmina Uzelac | 24h | 222.48 |

| ID | WBS | Task | Duration | Start | Finish | Predecessors | Total slack | Free slack | Constraint | Resources | Work | Cost |
| --- | --- | --- | --- | --- | --- | --- | --- | --- | --- | --- | --- | --- |
| 25 | 1.5.2 | **Vendor evaluacija** | 3d | 2020-06-09 | 2020-06-11 |  | 51.12d |  |  |  | 64h | 588.96 |
| 26 | 1.5.2.1 | Odgovoriti na sve zahteve | 3d | 2020-06-09 | 2020-06-11 | 24 | 51.12d | 0d |  | Jana Sailovic; Petar Petrovic | 48h | 432 |
| 27 | 1.5.2.2 | Smanjiti listu ponudjaca | 2d | 2020-06-09 | 2020-06-10 | 24SS | 755.12d |  | start no earlier than 2020-06-09 | Jasmina Uzelac | 16h | 156.96 |
| 28 | 1.5.3 | **Vendor selekcija i potpisivanje ugovora** | 4d | 2020-06-12 | 2020-06-17 |  | 51.12d |  |  |  | 64h | 601.92 |
| 29 | 1.5.3.1 | Odabir odgovarajucih vendora | 2d | 2020-06-12 | 2020-06-15 | 26 | 51.12d | 0d |  | Petar Petrovic; Jasmina Uzelac | 32h | 300.96 |
| 30 | 1.5.3.2 | Potpisivanje ugovora | 2d | 2020-06-16 | 2020-06-17 | 29 | 51.12d | 0d |  | Jana Sailovic; Jasmina Uzelac | 32h | 300.96 |
| 31 | 1.5.4 | **Vendor upravljanje** | 7d | 2020-06-18 | 2020-06-26 |  | 743.12d |  |  |  | 96h | 909.36 |
| 32 | 1.5.4.1 | Nadgledati progres i performanse | 7d | 2020-06-18 | 2020-06-26 | 30 | 743.12d | 0d |  | Tamara Sekularac | 56h | 549.36 |
| 33 | 1.5.4.2 | Obezbediti da se ispostuju uslovi ugovora | 5d | 2020-06-18 | 2020-06-24 | 32SS | 745.12d |  |  | Petar Petrovic | 40h | 360 |
| 34 | 1.6 | **Upravljanje rizicima** | 20d | 2020-06-18 | 2020-07-15 |  | 51.12d |  |  |  | 216h | 1,989.36 |
| 35 | 1.6.1 | **Prepoznavanje rizika** | 8d | 2020-06-18 | 2020-06-29 |  | 51.12d |  |  |  | 80h | 745.92 |
| 36 | 1.6.1.1 | Utvrdjivanje tehnickih rizika | 2d | 2020-06-18 | 2020-06-19 | 30 | 51.12d | 0d |  | Jana Sailovic | 16h | 144 |
| 37 | 1.6.1.2 | Utvrdjivanje rizika upravljana projektom | 2d | 2020-06-22 | 2020-06-23 | 36 | 51.12d | 0d |  | Jana Sailovic | 16h | 144 |
| 38 | 1.6.1.3 | Utvrdjivanje spoljasnjih rizika | 2d | 2020-06-24 | 2020-06-25 | 37 | 51.12d | 0d |  | Jasmina Uzelac | 16h | 156.96 |
| 39 | 1.6.1.4 | Utvrdjivanje organizacionih rizika | 2d | 2020-06-26 | 2020-06-29 | 38 | 51.12d | 0d |  | Petar Petrovic; Jasmina Uzelac | 32h | 300.96 |
| 40 | 1.6.2 | Procena rizika | 3d | 2020-06-30 | 2020-07-02 | 39 | 51.12d | 0d |  | Jasmina Uzelac | 24h | 235.44 |
| 41 | 1.6.3 | **Smanjenje rizika** | 4d | 2020-07-03 | 2020-07-08 |  | 51.12d |  |  |  | 32h | 288 |
| 42 | 1.6.3.1 | Planiranje nepredvidjenih situacija | 2d | 2020-07-03 | 2020-07-06 | 40 | 51.12d | 0d |  | Petar Petrovic | 16h | 144 |
| 43 | 1.6.3.2 | Tehnike ublazavanja | 2d | 2020-07-07 | 2020-07-08 | 42 | 51.12d | 0d |  | Petar Petrovic | 16h | 144 |
| 44 | 1.6.4 | **Monitoring i kontrola rizika** | 5d | 2020-07-09 | 2020-07-15 |  | 51.12d |  |  |  | 80h | 720 |
| 45 | 1.6.4.1 | Upoznavanje projektnog tima sa rizicima | 2d | 2020-07-09 | 2020-07-10 | 43 | 51.12d | 0d |  | Petar Petrovic; Jana Sailovic | 32h | 288 |
| 46 | 1.6.4.2 | Uspostavljane log rizika | 3d | 2020-07-13 | 2020-07-15 | 45 | 51.12d | 0d |  | Jana Sailovic; Petar Petrovic | 48h | 432 |
| 47 | 1.7 | **Upravljanje kvalitetom** | 482.12d | 2020-07-16 | 2022-05-23 | 46 | 51.12d |  |  |  | 2496h | 180,146.32 |
| 48 | 1.7.1 | **Planiranje kvaliteta** | 20d | 2020-07-16 | 2020-08-12 |  | 51.12d |  |  |  | 248h | 2,283.84 |
| 49 | 1.7.1.1 | Utvrdjivanje faktora okruzenja | 3d | 2020-07-16 | 2020-07-20 | 46 | 51.12d | 0d |  | Petar Petrovic; Jana Sailovic | 48h | 432 |
| 50 | 1.7.1.2 | Uvid u organizaciona sredstva | 3d | 2020-07-21 | 2020-07-23 | 49 | 51.12d | 0d |  | Jana Sailovic; Jasmina Uzelac | 48h | 451.44 |

| ID | WBS | Task | Type | Duration | Start | Finish | Predecessors | Total slack | Free slack | Resources | Work | Cost |
| --- | --- | --- | --- | --- | --- | --- | --- | --- | --- | --- | --- | --- |
| 51 | 1.7.1.3 | **Pravljenje plana upravljana kvalitetom** |  | 9d | 2020-07-24 | 2020-08-05 | 50 | 51.12d |  |  | 72h | 648 |
| 52 | 1.7.1.3.1 | Utvrdjivanje nacina ispunjenja polise kvaliteta |  | 3d | 2020-07-24 | 2020-07-28 | 50 | 51.12d | 0d | Petar Petrovic | 24h | 216 |
| 53 | 1.7.1.3.2 | Utvrdjivanje metrike za merenje kvaliteta |  | 2d | 2020-07-29 | 2020-07-30 | 52 | 51.12d | 0d | Petar Petrovic | 16h | 144 |
| 54 | 1.7.1.3.3 | Napisati program za poboljsanje procesa |  | 4d | 2020-07-31 | 2020-08-05 | 53 | 51.12d | 0d | Jana Sailovic | 32h | 288 |
| 55 | 1.7.1.4 | Integracija plana kvaliteta i utvrdjenih zahteva za realizaciju |  | 5d | 2020-08-06 | 2020-08-12 | 54, 173 | 51.12d | 0d | Petar Petrovic; Jasmina Uzelac | 80h | 752.4 |
| 56 | 1.7.2 | **Garancija kvaliteta** |  | 5d | 2020-08-13 | 2020-08-19 |  | 51.12d |  |  | 120h | 1,112.4 |
| 57 | 1.7.2.1 | Utvrdjivanje liste aktivnosti za garanciju kvaliteta |  | 5d | 2020-08-13 | 2020-08-19 | 55 | 51.12d | 0d | Petar Petrovic; Jana Sailovic; Jasmina Uzelac | 120h | 1,112.4 |
| 58 | 1.7.3 | **Kontrola kvaliteta** |  | 174d | 2021-09-21 | 2022-05-23 |  | 248d |  | Subcontracting [0.1%] | 2128h | 176,750.08 |
| 59 | 1.7.3.1 | Provera kvaliteta modula 1 i eliminacija nesaglasnosti |  | 14d | 2021-09-21 | 2021-10-11 | 213 | 408d |  | Petar Petrovic; Jana Sailovic; Jasmina Uzelac; Simo Häyhä | 448h | 5,569.76 |
| 60 | 1.7.3.2 | Provera kvaliteta modula 2 i eliminacija nesaglasnosti |  | 14d | 2021-11-16 | 2021-12-06 | 214 | 368d |  | Jana Sailovic; Petar Petrovic; Jasmina Uzelac; Eero Saarinen | 448h | 5,569.76 |
| 61 | 1.7.3.3 | Provera kvaliteta modula 3 i eliminacija nesaglasnosti |  | 14d | 2022-01-11 | 2022-01-31 | 215 | 328d |  | Jana Sailovic; Petar Petrovic; Jasmina Uzelac; Urho Kekkonen | 448h | 5,569.76 |
| 62 | 1.7.3.4 | Provera kvaliteta modula 4 i eliminacija nesaglasnosti |  | 14d | 2022-03-08 | 2022-03-28 | 216 | 288d |  | Jana Sailovic; Petar Petrovic; Tarja Halonen | 336h | 4,471.04 |
| 63 | 1.7.3.5 | Provera kvaliteta modula 5 i eliminacija nesaglasnosti |  | 14d | 2022-05-03 | 2022-05-23 | 217 | 248d |  | Jana Sailovic; Petar Petrovic; Jasmina Uzelac; Eero Saarinen | 448h | 5,569.76 |
| 64 | 1.8 | Kick Off sastanak |  | 5d | 2020-08-20 | 2020-08-26 | 65SS | 67.12d | 16d | Petar Petrovic; Jasmina Uzelac | 80h | 752.4 |
| 65 | 1.9 | **Upravljanje komunikacijama** |  | 21d | 2020-08-20 | 2020-09-17 |  | 51.12d | 0d |  | 392h | 3,618.72 |
| 66 | 1.9.1 | Utvrdjivanje komun. potreba svih ucesnika |  | 3d | 2020-08-20 | 2020-08-24 | 57 | 51.12d | 0d | Jana Sailovic | 24h | 216 |
| 67 | 1.9.2 | Utvrdjivanje broja neophodnih sastanaka |  | 4d | 2020-08-25 | 2020-08-28 | 66 | 51.12d | 0d | Jana Sailovic | 32h | 288 |
| 68 | 1.9.3 | Pravljenje rasporeda sastanaka |  | 14d | 2020-08-31 | 2020-09-17 | 67 | 51.12d |  | Petar Petrovic; Jasmina Uzelac; Jana Sailovic | 336h | 3,114.72 |
| 69 | 1.10 | Dokumentovan projektni plan | milestone | 0d | 2020-09-17 | 2020-09-17 | 65, 64 | 51.12d | 0d |  |  |  |
| 70 | 1.11 | **Project Review sastanci** |  | 479d | 2021-06-24 | 2023-04-26 |  | 6d |  | ETF putovanje [0.1%]; VMC putovanje [0.1%]; POLITOR putovanje [0.1%]; BIRD putovanje [0.1%]; ENX putovanje [0.1%]; ABB putovanje [0.1%]; BAK putovanje [0.1%]; TIE putovanje [0.1%] | 2000h | 356,525.52 |
| 71 | 1.11.1 | Spremanje dokumentacije za sastanak |  | 5d | 2021-06-24 | 2021-07-01 | 209 | 462d | 0d | Petar Petrovic; Jasmina Uzelac; Giordano Raci | 120h | 1,444.8 |
| 72 | 1.11.2 | Organizacija sastanka |  | 14d | 2021-07-01 | 2021-07-21 | 71 | 462d | 9d | Jana Sailovic; Jasmina Uzelac; Federica Capelluti | 336h | 4,045.44 |
| 73 | 1.11.3 | Sastanak povodom predstavljanja arhitekture sistema |  | 4d | 2021-08-03 | 2021-08-09 | 211, 72 | 453d |  | Petar Petrovic; Jana Sailovic | 64h | 576 |
| 74 | 1.11.4 | Spremanje dokumentacije |  | 5d | 2022-03-08 | 2022-03-15 | 217SS | 255d | 0d | Jasmina Uzelac; Giordano Raci | 80h | 1,084.8 |
| 75 | 1.11.5 | Organizacija sastanka |  | 14d | 2022-03-28 | 2022-04-15 | 74 | 255d | 12d | Petar Petrovic; Jasmina Uzelac; Federica Capelluti | 336h | 4,045.44 |
| 76 | 1.11.6 | Sastanak povodom predstavljanja razvijenih modula |  | 5d | 2022-05-23 | 2022-05-30 | 218, 75 | 243d |  | Jana Sailovic; Jasmina Uzelac; Giordano Raci | 120h | 1,444.8 |
| 77 | 1.11.7 | Spremanje dokumentacije |  | 5d | 2022-07-18 | 2022-07-25 | 222SS | 184d | 0d | Jana Sailovic; Petar Petrovic | 80h | 720 |
| 78 | 1.11.8 | Organizacija sastanka |  | 14d | 2022-07-25 | 2022-08-12 | 77 | 184d | 26d | Petar Petrovic; Jasmina Uzelac; Federica Capelluti | 336h | 4,045.44 |
| 79 | 1.11.9 | Sastanak nakon instaliranja opreme |  | 5d | 2022-09-19 | 2022-09-26 | 223, 78 | 158d |  | Petar Petrovic | 40h | 360 |
| 80 | 1.11.10 | Spremanje dokumentacije |  | 5d | 2023-03-06 | 2023-03-13 | 235SS | 17d | 0d | Petar Petrovic | 40h | 360 |
| 81 | 1.11.11 | Organizacija sastanka |  | 14d | 2023-03-13 | 2023-03-31 | 80 | 17d | 11d | Jana Sailovic; Jasmina Uzelac; Federica Capelluti | 336h | 4,045.44 |
| 82 | 1.11.12 | Sastanak nakon izvrsenog testiranja |  | 7d | 2023-04-17 | 2023-04-26 | 236, 81 | 6d |  | Petar Petrovic; Jasmina Uzelac | 112h | 1,053.36 |

| ID | WBS | Task | Duration | Start | Finish | Predecessors | Total slack | Free slack | Constraint | Resources | Work | Cost |
| --- | --- | --- | --- | --- | --- | --- | --- | --- | --- | --- | --- | --- |
| 83 | 1.12 | **Projektne promene** | 39d | 2020-09-18 | 2020-11-11 |  | 51.12d |  |  |  | 1800h | 36,930.72 |
| 84 | 1.12.1 | Podnosenje zahteva za promene | 7d | 2020-09-18 | 2020-09-28 | 69, 177 | 51.12d | 0d |  | Petar Petrovic; Jasmina Uzelac; David Schlossberg; Mikko Marcio; Paul Hermat; Siegurd Muller | 336h | 6,804.56 |
| 85 | 1.12.2 | Pregled zahteva za promene | 7d | 2020-09-29 | 2020-10-07 | 84 | 51.12d | 0d |  | Petar Petrovic; Jasmina Uzelac; David Schlossberg; Mikko Marcio; Paul Hermat; Siegurd Muller | 336h | 6,804.56 |
| 86 | 1.12.3 | Impact study | 14d | 2020-10-08 | 2020-10-27 | 85 | 51.12d | 0d |  | Jana Sailovic; Jasmina Uzelac; David Schlossberg; Mikko Marcio; Paul Hermat; Siegurd Muller | 672h | 13,609.12 |
| 87 | 1.12.4 | Pregled impacty study | 5d | 2020-10-28 | 2020-11-03 | 86 | 51.12d | 0d |  | Mikko Marcio; Paul Hermat; Siegurd Muller; Drazen Draskovic | 160h | 3,808 |
| 88 | 1.12.5 | Potvrdjivanje promena | 1d | 2020-11-04 | 2020-11-04 | 87 | 51.12d | 0d |  | Petar Petrovic; Jana Sailovic; Jasmina Uzelac; David Schlossberg; Mikko Marcio; Paul Hermat; Siegurd Muller | 56h | 1,044.08 |
| 89 | 1.12.6 | Obavestenje ucesnika o promenama | 5d | 2020-11-05 | 2020-11-11 | 88 | 51.12d | 17.12d |  | Petar Petrovic; Jasmina Uzelac; David Schlossberg; Mikko Marcio; Paul Hermat; Siegurd Muller | 240h | 4,860.4 |
| 90 | 1.13 | **Aktuelni izvestaji** | 703d | 2020-08-11 | 2023-04-20 |  | 9.12d |  |  |  | 3808h | 42,092.96 |
| 91 | 1.13.1 | **I kvartal I godina** | 14d | 2020-08-11 | 2020-08-28 |  | 691.12d |  |  |  | 112h | 1,098.72 |
| 92 | 1.13.1.1 | Prikupljanje statusa i relevantih podataka | 7d | 2020-08-11 | 2020-08-19 |  | 691.12d | 0d | start no earlier than 2020-08-11 | Milos Cvetanovic | 56h | 549.36 |
| 93 | 1.13.1.2 | Postupanje po podacima | 7d | 2020-08-20 | 2020-08-28 | 92 | 691.12d | 64.12d |  | Milos Cvetanovic | 56h | 549.36 |
| 94 | 1.13.2 | **II kvartal I godina** | 14d | 2020-11-09 | 2020-11-27 |  | 627d |  |  |  | 168h | 1,557.36 |
| 95 | 1.13.2.1 | Prikupljanje statusa i relevantih podataka | 7d | 2020-11-09 | 2020-11-18 |  | 627d | 0d | start no earlier than 2020-11-09 | Jana Sailovic | 56h | 504 |
| 96 | 1.13.2.2 | Postupanje po podacima | 7d | 2020-11-18 | 2020-11-27 | 95 | 627d | 0d |  | Jana Sailovic; Jasmina Uzelac | 112h | 1,053.36 |
| 97 | 1.13.3 | Kumulativni izvestaj i postupanje po njemu | 7d | 2020-11-27 | 2020-12-08 | 96, 93 | 627d |  |  | Jana Sailovic; Petar Petrovic; Jasmina Uzelac | 168h | 1,557.36 |
| 98 | 1.13.4 | **III kvartal I godina** | 14d | 2021-02-08 | 2021-02-26 |  | 501d |  |  |  | 280h | 2,610.72 |
| 99 | 1.13.4.1 | Postupanje po podacima | 7d | 2021-02-08 | 2021-02-17 |  | 501d | 0d | start no earlier than 2021-02-08 | Petar Petrovic; Jana Sailovic; Jasmina Uzelac | 168h | 1,557.36 |
| 100 | 1.13.4.2 | Prikupljanje statusa i relevantih podataka | 7d | 2021-02-17 | 2021-02-26 | 99 | 501d | 65d |  | Jana Sailovic; Jasmina Uzelac | 112h | 1,053.36 |
| 101 | 1.13.5 | **IV kvartal I godina** | 14d | 2021-05-10 | 2021-05-28 |  | 436d |  |  |  | 280h | 2,565.36 |
| 102 | 1.13.5.1 | Prikupljanje statusa i relevantih podataka | 7d | 2021-05-10 | 2021-05-19 |  | 436d | 0d | start no earlier than 2021-05-10 | Petar Petrovic; Jana Sailovic; Jasmina Uzelac | 168h | 1,557.36 |
| 103 | 1.13.5.2 | Postupanje po podacima | 7d | 2021-05-19 | 2021-05-28 | 102 | 436d | 0d |  | Jana Sailovic; Petar Petrovic | 112h | 1,008 |
| 104 | 1.13.6 | Kumulativni izvestaj i postupanje po njemu | 7d | 2021-05-28 | 2021-06-08 | 103, 100 | 436d | 0d |  | Jana Sailovic; Petar Petrovic; Jasmina Uzelac | 168h | 1,557.36 |
| 105 | 1.13.7 | **I kvartal II godina** | 14d | 2021-08-09 | 2021-08-27 |  | 432d |  |  |  | 336h | 4,820.48 |
| 106 | 1.13.7.1 | Prikupljanje statusa i relevantih podataka | 7d | 2021-08-09 | 2021-08-18 |  | 432d | 0d | start no earlier than 2021-08-09 | Petar Petrovic; Jasmina Uzelac; Johan Baeck | 168h | 2,410.24 |
| 107 | 1.13.7.2 | Postupanje po podacima | 7d | 2021-08-18 | 2021-08-27 | 106 | 432d | 79d |  | Jana Sailovic; Jasmina Uzelac; Johan Baeck | 168h | 2,410.24 |

| ID | WBS | Task | Duration | Start | Finish | Predecessors | Total slack | Free slack | Constraint | Resources | Work | Cost |
| --- | --- | --- | --- | --- | --- | --- | --- | --- | --- | --- | --- | --- |
| 108 | 1.13.8 | **II kvartal II godina** | 28d | 2021-11-08 | 2021-12-16 |  | 353d |  |  |  | 280h | 4,271.12 |
| 109 | 1.13.8.1 | Prikupljanje statusa i relevantih podataka | 7d | 2021-11-08 | 2021-12-07 |  | 353d | 0d | start no earlier than 2021-11-08 | Jana Sailovic; Jasmina Uzelac; Johan Baeck | 168h | 2,410.24 |
| 110 | 1.13.8.2 | Postupanje po podacima | 7d | 2021-12-07 | 2021-12-16 | 109 | 353d | 0d |  | Petar Petrovic; Johan Baeck | 112h | 1,860.88 |
| 111 | 1.13.9 | Kumulativni izvestaj i postupanje po njemu | 7d | 2021-12-16 | 2021-12-27 | 110, 107 | 353d |  |  | Jana Sailovic; Petar Petrovic; Jasmina Uzelac; Johan Baeck | 224h | 2,914.24 |
| 112 | 1.13.10 | **III kvartal III godina** | 14d | 2022-02-07 | 2022-02-25 |  | 246d |  |  |  | 336h | 4,820.48 |
| 113 | 1.13.10.1 | Prikupljanje statusa i relevantih podataka | 7d | 2022-02-07 | 2022-02-16 |  | 246d | 0d | start no earlier than 2022-02-07 | Petar Petrovic; Jasmina Uzelac; Johan Baeck | 168h | 2,410.24 |
| 114 | 1.13.10.2 | Postupanje po podacima | 7d | 2022-02-16 | 2022-02-25 | 113 | 246d | 80d |  | Jana Sailovic; Jasmina Uzelac; Johan Baeck | 168h | 2,410.24 |
| 115 | 1.13.11 | **IV kvartal II godina** | 14d | 2022-05-30 | 2022-06-17 |  | 166d |  |  |  | 280h | 2,610.72 |
| 116 | 1.13.11.1 | Prikupljanje statusa i relevantih podataka | 7d | 2022-05-30 | 2022-06-08 |  | 166d | 0d | start no earlier than 2022-05-30 | Jana Sailovic; Jasmina Uzelac | 112h | 1,053.36 |
| 117 | 1.13.11.2 | Postupanje po podacima | 7d | 2022-06-08 | 2022-06-17 | 116 | 166d | 0d |  | Petar Petrovic; Jasmina Uzelac; Jana Sailovic | 168h | 1,557.36 |
| 118 | 1.13.12 | Kumulativni izvestaj i postupanje po njemu | 7d | 2022-06-17 | 2022-06-28 | 117, 114 | 166d | 0d |  | Jana Sailovic; Petar Petrovic; Jasmina Uzelac; Johan Baeck | 224h | 2,914.24 |
| 119 | 1.13.13 | **I kvartal III godina** | 14d | 2022-08-12 | 2022-09-01 |  | 168d |  |  |  | 336h | 3,114.72 |
| 120 | 1.13.13.1 | Prikupljanje statusa i relevantih podataka | 7d | 2022-08-12 | 2022-08-23 |  | 168d | 0d | start no earlier than 2022-08-08 | Petar Petrovic; Jana Sailovic; Jasmina Uzelac | 168h | 1,557.36 |
| 121 | 1.13.13.2 | Postupanje po podacima | 7d | 2022-08-23 | 2022-09-01 | 120 | 168d | 61d |  | Petar Petrovic; Jana Sailovic; Jasmina Uzelac | 168h | 1,557.36 |
| 122 | 1.13.14 | **II kvartal III godina** | 14d | 2022-11-07 | 2022-11-25 |  | 107d |  |  |  | 112h | 1,008 |
| 123 | 1.13.14.1 | Prikupljanje statusa i relevantih podataka | 7d | 2022-11-07 | 2022-11-16 |  | 107d | 0d | start no earlier than 2022-11-07 | Petar Petrovic | 56h | 504 |
| 124 | 1.13.14.2 | Postupanje po podacima | 7d | 2022-11-16 | 2022-11-25 | 123 | 107d | 0d |  | Petar Petrovic | 56h | 504 |
| 125 | 1.13.15 | Kumulativni izvestaj i postupanje po njemu | 7d | 2022-11-25 | 2022-12-06 | 124, 121 | 107d |  |  | Jana Sailovic; Jasmina Uzelac; Petar Petrovic | 168h | 1,557.36 |
| 126 | 1.13.16 | **III kvartal III godina** | 21.88d | 2023-01-16 | 2023-02-14 |  | 56.12d |  |  |  | 224h | 2,106.72 |
| 127 | 1.13.16.1 | Prikupljanje statusa i relevantih podataka | 11.88d | 2023-01-16 | 2023-01-31 |  | 56.12d | 0d | start no earlier than 2023-01-16 | Petar Petrovic; Jasmina Uzelac | 112h | 1,053.36 |
| 128 | 1.13.16.2 | Postupanje po podacima | 10d | 2023-02-01 | 2023-02-14 | 127 | 56.12d |  | start no earlier than 2023-02-01 | Petar Petrovic; Jasmina Uzelac | 112h | 1,053.36 |
| 129 | 1.13.17 | **IV kvartal III godina** | 14d | 2023-04-03 | 2023-04-20 |  | 9.12d |  |  |  | 112h | 1,008 |
| 130 | 1.13.17.1 | Prikupljanje statusa i relevantih podataka | 7d | 2023-04-03 | 2023-04-11 |  | 9.12d | 0d | start no earlier than 2023-04-03 | Jana Sailovic | 56h | 504 |
| 131 | 1.13.17.2 | Postupanje po podacima | 7d | 2023-04-12 | 2023-04-20 | 130 | 9.12d |  | start no earlier than 2023-04-12 | Jana Sailovic | 56h | 504 |

| ID | WBS | Task | Duration | Start | Finish | Predecessors | Total slack | Free slack | Constraint | Resources | Work | Cost |
| --- | --- | --- | --- | --- | --- | --- | --- | --- | --- | --- | --- | --- |
| 132 | 1.14 | **Izrada indeksa performansi** | 331d | 2021-06-08 | 2022-09-14 |  | 166d |  |  |  | 896h | 8,426.88 |
| 133 | 1.14.1 | Schedule Performance Index 1. | 16d | 2021-06-08 | 2021-07-23 | 104 | 436d | 0d |  | Jana Sailovic; Jasmina Uzelac | 224h | 2,106.72 |
| 134 | 1.14.2 | Cost Performance Index 1. | 21d | 2021-07-23 | 2021-09-01 | 133 | 436d |  |  | Jana Sailovic; Jasmina Uzelac | 224h | 2,106.72 |
| 135 | 1.14.3 | Schedule Performance Index 2. | 14d | 2022-06-28 | 2022-07-18 | 118 | 166d | 0d |  | Jana Sailovic; Jasmina Uzelac | 224h | 2,106.72 |
| 136 | 1.14.4 | Cost Performance Index 2. | 28d | 2022-07-18 | 2022-09-14 | 135 | 166d |  |  | Jana Sailovic; Jasmina Uzelac | 224h | 2,106.72 |
| 137 | 1.15 | **Zatvaranje projekta** | 103d | 2022-12-12 | 2023-05-04 |  | 0d |  |  |  | 480h | 124,384.8 |
| 138 | 1.15.1 | Usvajanje procedura testiranja | 15d | 2022-12-12 | 2023-01-02 | 232SS | 0d |  |  | Petar Petrovic | 120h | 1,080 |
| 139 | 1.15.2 | Skupljanje projektne dokumentacije | 30d | 2023-02-13 | 2023-05-04 | 138 | 0d |  |  | Jana Sailovic | 240h | 2,160 |
| 140 | 1.15.3 | Post-implementaciona revizija | 10d | 2023-04-03 | 2023-04-17 | 139SS | 1d | 0d | start no earlier than 2023-04-03 | Jasmina Uzelac; Revizija [0.1%] | 80h | 120,784.8 |
| 141 | 1.15.4 | Finalni izvestaj | 5d | 2023-04-26 | 2023-05-03 | 140 | 1d |  |  | Petar Petrovic | 40h | 360 |
| 142 | 2 | **Analiza korisnickih zahteva** | 90d | 2020-05-04 | 2020-09-04 |  | 46.12d |  |  | Other goods and services [0.1%]; Laptop [2000%]; Stampac [500%]; Telefon [1000%]; Projektor [600%] | 4456h | 252,539.76 |
| 143 | 2.1 | **Analiziranje postojecih aplikacija** | 7d | 2020-05-04 | 2020-05-12 |  | 46.12d |  |  |  | 296h | 8,235.92 |
| 144 | 2.1.1 | Analiziranje rivalskih aplikacija | 4d | 2020-05-04 | 2020-05-07 |  | 46.12d | 0d |  | Federica Capelluti; Alphonse LaMartine; Jacquies Lehmans; Johan Guttenbaum; Mikko Marcio; Mike van Diem; Rijk de Gooye | 224h | 6,668.48 |
| 145 | 2.1.2 | Analiziranje tehnicki slicnih aplikacija | 3d | 2020-05-08 | 2020-05-12 | 144 | 46.12d | 0d |  | Giordano Raci; Mike van Diem; Rijk de Gooye | 72h | 1,567.44 |
| 146 | 2.2 | **Pravljenje online ankete** | 5d | 2020-05-13 | 2020-05-19 |  | 46.12d |  |  | Subcontracting [0.1%] | 120h | 42,612.4 |
| 147 | 2.2.1 | Smisljanje pitanja za ankete | 2d | 2020-05-13 | 2020-05-14 | 145 | 46.12d | 0d |  | Giordano Raci; Mike van Diem; Rijk de Gooye | 48h | 1,044.96 |
| 148 | 2.2.2 | Sastanak sa firmom za online ankete | 1d | 2020-05-15 | 2020-05-15 | 147 | 46.12d | 0d |  | Federica Capelluti; Mike van Diem; Rijk de Gooye | 24h | 522.48 |
| 149 | 2.2.3 | Dostavljanje pitanja online ankete | 1d | 2020-05-18 | 2020-05-18 | 148 | 46.12d | 0d |  | Federica Capelluti; Mike van Diem; Rijk de Gooye | 24h | 522.48 |
| 150 | 2.2.4 | Test provera ankete na sajtu od strane zaposlenog | 1d | 2020-05-19 | 2020-05-19 | 149 | 46.12d | 0d |  | Giordano Raci; Mike van Diem; Rijk de Gooye | 24h | 522.48 |
| 151 | 2.3 | **Anketiranje korisnika** | 7d | 2020-05-20 | 2020-05-28 |  | 46.12d |  |  |  | 168h | 3,657.36 |
| 152 | 2.3.1 | Anketiranje korisnika el automobila | 2d | 2020-05-20 | 2020-05-21 | 150 | 46.12d | 0d |  | Giordano Raci; Mike van Diem; Rijk de Gooye | 48h | 1,044.96 |
| 153 | 2.3.2 | Anketiranje korisnika el automobila koji pune vozilo u garazi | 2d | 2020-05-22 | 2020-05-25 | 152 | 46.12d | 0d |  | Federica Capelluti; Mike van Diem; Rijk de Gooye | 48h | 1,044.96 |
| 154 | 2.3.3 | Anketiranje korisnika koji pune vozilo na naplatnoj rampi | 3d | 2020-05-26 | 2020-05-28 | 153 | 46.12d | 0d |  | Federica Capelluti; Mike van Diem; Rijk de Gooye | 72h | 1,567.44 |
| 155 | 2.4 | **Anketiranje investitora** | 7d | 2020-05-29 | 2020-06-08 |  | 46.12d |  |  |  | 168h | 3,657.36 |
| 156 | 2.4.1 | Anketiranje javnih preduzeca za puteve | 2d | 2020-05-29 | 2020-06-01 | 154 | 46.12d | 0d |  | Federica Capelluti; Mike van Diem; Rijk de Gooye | 48h | 1,044.96 |
| 157 | 2.4.2 | Anketiranje energetskih firmi | 2d | 2020-06-02 | 2020-06-03 | 156 | 46.12d | 0d |  | Giordano Raci; Mike van Diem; Rijk de Gooye | 48h | 1,044.96 |
| 158 | 2.4.3 | Anketiranje malih proizvodjaca | 2d | 2020-06-04 | 2020-06-05 | 157 | 46.12d | 0d |  | Giordano Raci; Mike van Diem; Rijk de Gooye | 48h | 1,044.96 |
| 159 | 2.4.4 | Anketiranje malih investitora | 1d | 2020-06-08 | 2020-06-08 | 158 | 46.12d | 0d |  | Federica Capelluti; Mike van Diem; Rijk de Gooye | 24h | 522.48 |

| ID | WBS | Task | Type | Duration | Start | Finish | Predecessors | Total slack | Free slack | Constraint | Resources | Work | Cost |
| --- | --- | --- | --- | --- | --- | --- | --- | --- | --- | --- | --- | --- | --- |
| 160 | 2.5 | **Izrada studije izvodljivosti** |  | 20d | 2020-06-09 | 2020-07-06 |  | 46.12d |  |  |  | 960h | 21,065.6 |
| 161 | 2.5.1 | **Tehnicka izvodljivost** |  | 5d | 2020-06-09 | 2020-06-15 |  | 46.12d |  |  |  | 240h | 5,266.4 |
| 162 | 2.5.1.1 | Utvrdjivanje velicine projekta |  | 2d | 2020-06-09 | 2020-06-10 | 159 | 46.12d | 0d |  | Federica Capelluti; Zaharije Radivojevic; Siegurd Muller; Mikko Marcio; Mike van Diem; Rijk de Gooye | 96h | 2,106.56 |
| 163 | 2.5.1.2 | Utvrdjivanje strukture projekta |  | 2d | 2020-06-11 | 2020-06-12 | 162 | 46.12d | 0d |  | Giordano Raci; Zaharije Radivojevic; Siegurd Muller; Mikko Marcio; Mike van Diem; Rijk de Gooye | 96h | 2,106.56 |
| 164 | 2.5.1.3 | Utvrdjivanje poznate tehnologije za izradu |  | 1d | 2020-06-15 | 2020-06-15 | 163 | 46.12d | 0d |  | Giordano Raci; Zaharije Radivojevic; Siegurd Muller; Mikko Marcio; Mike van Diem; Rijk de Gooye | 48h | 1,053.28 |
| 165 | 2.5.2 | **Ekonomska izvodljivost** |  | 5d | 2020-06-16 | 2020-06-22 |  | 46.12d | 0d |  |  | 240h | 5,266.4 |
| 166 | 2.5.2.1 | Cost/Benefit analiza |  | 3d | 2020-06-16 | 2020-06-18 | 164 | 46.12d | 0d |  | Federica Capelluti; Zaharije Radivojevic; Siegurd Muller; Mikko Marcio; Mike van Diem; Rijk de Gooye | 144h | 3,159.84 |
| 167 | 2.5.2.2 | Break-Even analiza |  | 2d | 2020-06-19 | 2020-06-22 | 166 | 46.12d |  |  | Giordano Raci; Zaharije Radivojevic; Siegurd Muller; Mikko Marcio; Mike van Diem; Rijk de Gooye | 96h | 2,106.56 |
| 168 | 2.5.3 | Organizaciona izvodljivost |  | 5d | 2020-06-23 | 2020-06-29 | 165 | 46.12d | 0d |  | Giordano Raci; Zaharije Radivojevic; Siegurd Muller; Mikko Marcio; Mike van Diem; Rijk de Gooye | 240h | 5,266.4 |
| 169 | 2.5.4 | Zakonska izvodljivost |  | 5d | 2020-06-30 | 2020-07-06 | 168 | 46.12d | 0d |  | Federica Capelluti; Zaharije Radivojevic; Siegurd Muller; Mikko Marcio; Mike van Diem; Rijk de Gooye | 240h | 5,266.4 |
| 170 | 2.6 | **Izrada nacrta specifikacija** |  | 14d | 2020-07-07 | 2020-07-24 |  | 46.12d |  |  |  | 1344h | 32,578.56 |
| 171 | 2.6.1 | Izrada nacrta specifikacija korisnika |  | 7d | 2020-07-07 | 2020-07-15 | 169 | 46.12d | 0d |  | Federica Capelluti; Zaharije Radivojevic; Siegurd Muller; Alphonse LaMartine; Jacquies Lehmans; Johan Guttenbaum; Mike van Diem; Rijk de Gooye; Eero Saarinen; Simo Häyhä; Tarja Halonen; Urho Kekkonen | 672h | 16,289.28 |
| 172 | 2.6.2 | Izrada nacrta specifikacija investitora |  | 7d | 2020-07-16 | 2020-07-24 | 171 | 46.12d | 0d |  | Giordano Raci; Zaharije Radivojevic; Siegurd Muller; Alphonse LaMartine; Jacquies Lehmans; Johan Guttenbaum; Mike van Diem; Rijk de Gooye; Eero Saarinen; Simo Häyhä; Tarja Halonen; Urho Kekkonen | 672h | 16,289.28 |
| 173 | 2.7 | Provera nacrta specifikacija i dopuna |  | 3d | 2020-07-27 | 2020-07-29 | 172 | 46.12d | 0d |  | Federica Capelluti; Giordano Raci; Zaharije Radivojevic; Siegurd Muller; Mike van Diem; Rijk de Gooye | 144h | 2,716.8 |
| 174 | 2.8 | Izrada SRS dokumenta |  | 10d | 2020-07-30 | 2020-08-12 | 173 | 46.12d | 0d |  | Federica Capelluti; Giordano Raci; Zaharije Radivojevic; Siegurd Muller; Mikko Marcio; Alphonse LaMartine; Jacquies Lehmans; Johan Guttenbaum; Mike van Diem; Rijk de Gooye | 800h | 20,502.4 |
| 175 | 2.9 | Procena trajanja izrade |  | 3d | 2020-08-13 | 2020-08-17 | 174 | 60.12d | 0d |  | Giordano Raci; Mike van Diem; Rijk de Gooye | 72h | 1,567.44 |
| 176 | 2.10 | Dobijanje dozvole za nastavak razvoja |  | 4d | 2020-08-18 | 2020-08-21 | 175 | 60.12d | 0d |  | Federica Capelluti; Zaharije Radivojevic; Siegurd Muller; Mike van Diem; Rijk de Gooye | 160h | 3,068.48 |
| 177 | 2.11 | Izrada prototipa |  | 14d | 2020-08-18 | 2020-09-04 | 176SS | 60.12d | 0d |  | Giordano Raci; Lucio Visconti | 224h | 3,877.44 |
| 178 | 2.12 | Gotova analiza | milestone | 0d | 2020-09-04 | 2020-09-04 | 177 | 693.12d |  |  |  |  |  |
| 179 | 3 | **Dizajniranje korisnickog interfejsa** |  | 110d | 2020-07-06 | 2020-12-07 |  | 34d |  |  | Other goods and services [0.1%] | 4328h | 157,801.04 |
| 180 | 3.1 | **Istrazivanje** |  | 20d | 2020-07-06 | 2020-08-03 |  | 34d |  |  | Subcontracting [0.1%] | 960h | 37,502.4 |
| 181 | 3.1.1 | Istrazivanje rivalskih pristupa |  | 7d | 2020-07-06 | 2020-07-15 |  | 34d | 0d | start no earlier than 2020-07-06 | Johan Baeck; Tamara Sekularac; Filip Hadzic; Dietrich Muller; Johan Schwarzman; Gunnar Aarstand | 336h | 6,125.84 |
| 182 | 3.1.2 | Istrazivanje slicnih pristupa u dizajnu |  | 6d | 2020-07-15 | 2020-07-23 | 181 | 34d | 0d |  | Gunnar Aarstand; Tamara Sekularac; Filip Hadzic; Dietrich Muller; Johan Schwarzman; Johan Baeck | 288h | 5,250.72 |
| 183 | 3.1.3 | Uskladjivanje sa postojecim trendovima u dizajnu |  | 7d | 2020-07-23 | 2020-08-03 | 182 | 34d | 0d |  | Johan Baeck; Tamara Sekularac; Filip Hadzic; Dietrich Muller; Johan Schwarzman; Gunnar Aarstand | 336h | 6,125.84 |

| ID | WBS | Task | Type | Duration | Start | Finish | Predecessors | Total slack | Free slack | Constraint | Resources | Work | Cost |
| --- | --- | --- | --- | --- | --- | --- | --- | --- | --- | --- | --- | --- | --- |
| 184 | 3.2 | **Razumevanje zahteva** |  | 32d | 2020-08-03 | 2020-09-16 |  | 34d | 0d |  |  | 1520h | 28,608.48 |
| 185 | 3.2.1 | Sastanak sa korisnicima |  | 5d | 2020-08-03 | 2020-08-10 | 183 | 34d | 0d | start no earlier than 2020-07-06 | Johan Baeck; Tamara Sekularac; Filip Hadzic; Dietrich Muller; Johan Schwarzman; Gunnar Aarstand | 240h | 4,375.6 |
| 186 | 3.2.2 | Posmatranje korisnika i njihovih navika u postojecim okruzenjima |  | 5d | 2020-08-10 | 2020-08-17 | 185 | 34d | 0d |  | Johan Baeck; Tamara Sekularac; Filip Hadzic; Dietrich Muller; Johan Schwarzman; Gunnar Aarstand; Lucas Baeert | 280h | 5,529.6 |
| 187 | 3.2.3 | Analiza zahteva |  | 7d | 2020-08-17 | 2020-08-26 | 186, 174SS | 34d | 0d |  | Gunnar Aarstand; Tamara Sekularac; Filip Hadzic; Dietrich Muller; Johan Schwarzman; Johan Baeck | 336h | 6,125.84 |
| 188 | 3.2.4 | Resavanje nedoumica oko zahteva |  | 4d | 2020-08-26 | 2020-09-01 | 187 | 34d | 0d |  | Gunnar Aarstand; Tamara Sekularac; Filip Hadzic; Dietrich Muller; Johan Schwarzman; Johan Baeck | 192h | 3,500.48 |
| 189 | 3.2.5 | Definisanje tipova korisnika |  | 4d | 2020-09-01 | 2020-09-07 | 188 | 34d | 0d |  | Gunnar Aarstand; Tamara Sekularac; Filip Hadzic; Dietrich Muller; Johan Schwarzman; Johan Baeck | 192h | 3,500.48 |
| 190 | 3.2.6 | Definisanje use case |  | 7d | 2020-09-07 | 2020-09-16 | 189 | 34d |  |  | Gunnar Aarstand; Filip Hadzic; Dietrich Muller; Johan Schwarzman; Johan Baeck | 280h | 5,576.48 |
| 191 | 3.3 | **Nacrt** |  | 17d | 2020-09-16 | 2020-10-09 |  | 34d |  |  |  | 272h | 6,559.28 |
| 192 | 3.3.1 | Generisanje ideja |  | 6d | 2020-09-16 | 2020-09-24 | 184 | 34d | 0d |  | Johan Baeck; Gunnar Aarstand | 96h | 2,315.04 |
| 193 | 3.3.2 | Rad na osnovnim nacrtima |  | 5d | 2020-09-24 | 2020-10-01 | 192 | 34d | 0d |  | Johan Baeck; Gunnar Aarstand | 80h | 1,929.2 |
| 194 | 3.3.3 | Sastanak i predstavljanje nacrta |  | 1d | 2020-10-01 | 2020-10-02 | 193 | 34d | 0d |  | Gunnar Aarstand; Johan Baeck | 16h | 385.84 |
| 195 | 3.3.4 | Prepravljanje nacrta |  | 4d | 2020-10-02 | 2020-10-08 | 194 | 34d | 0d |  | Johan Baeck; Gunnar Aarstand | 64h | 1,543.36 |
| 196 | 3.3.5 | Ponovni sastanak i konacno utvrdjivanje nacrta |  | 1d | 2020-10-08 | 2020-10-09 | 195 | 34d | 0d |  | Gunnar Aarstand; Johan Baeck | 16h | 385.84 |
| 197 | 3.4 | **Dizajn** |  | 19d | 2020-10-09 | 2020-11-05 |  | 34d |  |  |  | 456h | 10,978.96 |
| 198 | 3.4.1 | Dizajniranje slika |  | 10d | 2020-10-09 | 2020-10-23 | 196 | 34d | 0d |  | Gunnar Aarstand; Johan Baeck; Rijk de Gooye | 240h | 5,778.4 |
| 199 | 3.4.2 | Definisanje teme i stila za implementaciju dizajna |  | 8d | 2020-10-23 | 2020-11-04 | 198 | 34d | 0d |  | Gunnar Aarstand; Johan Baeck; Rijk de Gooye | 192h | 4,622.72 |
| 200 | 3.4.3 | Sastanak i predstavljanje dizajna |  | 1d | 2020-11-04 | 2020-11-05 | 199 | 34d | 0d |  | Johan Baeck; Gunnar Aarstand; Rijk de Gooye | 24h | 577.84 |
| 201 | 3.5 | Implementacija |  | 15d | 2020-11-05 | 2020-11-26 | 200 | 34d | 0d |  | Gunnar Aarstand; Johan Baeck; Rijk de Gooye; Eero Saarinen; Simo Häyhä; Tarja Halonen; Urho Kekkonen | 840h | 19,189.2 |
| 202 | 3.6 | Evaluacija |  | 7d | 2020-11-26 | 2020-12-07 | 201 | 34d | 0d |  | Gunnar Aarstand; Johan Baeck; Filip Hadzic; Tamara Sekularac; Dietrich Muller | 280h | 4,962.72 |
| 203 | 4 | **Dizajniranje arhitekture sistema** |  | 171d | 2020-12-07 | 2021-08-03 |  | 34d | 0d |  | Other goods and services [0.1%] | 9072h | 239,733.28 |
| 204 | 4.1 | Pregled usvojenog nacrta specifikacije zahteva |  | 7d | 2020-12-07 | 2020-12-16 | 202, 89 | 34d | 0d | start no earlier than 2020-12-07 | David Schlossberg; Garry Taichman; John Whiteberg; Nick Johnson | 224h | 3,877.44 |
| 205 | 4.2 | Specifikacija glavnih komponenti sistema |  | 30d | 2020-12-16 | 2021-01-27 | 204 | 34d | 0d |  | David Schlossberg; Garry Taichman; Zaharije Radivojevic; Johan Schwarzman; Federica Capelluti; Paul Hermat; John Whiteberg; Nick Johnson; Alphonse LaMartine; Eero Saarinen; Simo Häyhä; Tarja Halonen; Urho Kekkonen | 3120h | 64,663.2 |
| 206 | 4.3 | Specifikcija zaduzenja svake od komponenti |  | 35d | 2021-01-27 | 2021-03-17 | 205 | 34d | 0d |  | David Schlossberg; Garry Taichman; Johan Schwarzman; Paul Hermat; John Whiteberg; Nick Johnson | 1680h | 33,280.8 |
| 207 | 4.4 | Definisanje osobina svake od komponenti |  | 32d | 2021-03-17 | 2021-04-30 | 206 | 34d | 0d |  | David Schlossberg; Garry Taichman; Johan Schwarzman; Giordano Raci; Eero Saarinen | 1280h | 24,222.72 |
| 208 | 4.5 | Modelovanje baze podataka |  | 14d | 2021-04-30 | 2021-05-20 | 207 | 34d | 0d |  | David Schlossberg; Garry Taichman; John Whiteberg; Nick Johnson; Subcontracting [0.1%] | 448h | 19,754.88 |
| 209 | 4.6 | Vezivanje interfejsa i komponenti |  | 25d | 2021-05-20 | 2021-06-24 | 208 | 34d | 0d |  | David Schlossberg; Garry Taichman; Johan Schwarzman; Paul Hermat; John Whiteberg; Nick Johnson | 1200h | 23,772 |
| 210 | 4.7 | Veza i interakcija medju komponentama |  | 28d | 2021-06-24 | 2021-08-03 | 209 | 34d | 0d |  | David Schlossberg; Garry Taichman; Johan Schwarzman; John Whiteberg; Nick Johnson | 1120h | 20,162.24 |
| 211 | 4.8 | Dizajnirana arhitektura sistema | milestone | 0d | 2021-08-03 | 2021-08-03 | 210 | 34d | 0d |  |  |  |  |

| ID | WBS | Task | Type | Duration | Start | Finish | Predecessors | Total slack | Free slack | Constraint | Resources | Work | Cost |
| --- | --- | --- | --- | --- | --- | --- | --- | --- | --- | --- | --- | --- | --- |
| 212 | 5 | **Razvoj modula** |  | 195d | 2021-08-03 | 2022-05-03 |  | 34d |  |  | Other goods and services [0.1%] | 7800h | 145,409.6 |
| 213 | 5.1 | Razvoj modula za pregled punjaca |  | 35d | 2021-08-03 | 2021-09-21 | 203 | 34d | 0d |  | Zaharije Radivojevic; Filip Hadzic; Tamara Sekularac; Milos Cvetanovic; Eero Saarinen | 1400h | 17,124.8 |
| 214 | 5.2 | Razvoj modula za registraciju i prijavljivanje |  | 40d | 2021-09-21 | 2021-11-16 | 213 | 34d | 0d |  | Tamara Sekularac; Filip Hadzic; Zaharije Radivojevic; Milos Cvetanovic; Eero Saarinen | 1600h | 19,571.2 |
| 215 | 5.3 | Razvoj modula za kupce |  | 40d | 2021-11-16 | 2022-01-11 | 214 | 34d | 0d |  | Zaharije Radivojevic; Filip Hadzic; Tamara Sekularac; Milos Cvetanovic; Urho Kekkonen | 1600h | 19,571.2 |
| 216 | 5.4 | Razvoj modula za investitore |  | 40d | 2022-01-11 | 2022-03-08 | 215 | 34d | 0d |  | Tamara Sekularac; Filip Hadzic; Zaharije Radivojevic; Milos Cvetanovic; Tarja Halonen | 1600h | 19,571.2 |
| 217 | 5.5 | Razvoj modula admina |  | 40d | 2022-03-08 | 2022-05-03 | 216 | 34d | 0d |  | Zaharije Radivojevic; Filip Hadzic; Tamara Sekularac; Milos Cvetanovic; Eero Saarinen | 1600h | 19,571.2 |
| 218 | 5.6 | Razvijeni moduli | milestone | 0d | 2022-05-03 | 2022-05-03 | 217 | 243d | 0d |  |  |  |  |
| 219 | 6 | **Odabir lokacija i postavljanje punjaca** |  | 120d | 2022-04-04 | 2022-09-19 |  | 15d |  |  | Other goods and services [0.1%] | 7800h | 1,092,943.6 |
| 220 | 6.1 | Izrada studije potencijalnih lokacija |  | 60d | 2022-04-04 | 2022-06-27 | 217SS | 15d | 0d | start no earlier than 2022-04-04 | Mikko Marcio; Lucio Visconti; Alphonse LaMartine; Jacquies Lehmans; Johan Guttenbaum; Nikolas Schweinsteiger; Rijk de Gooye | 3360h | 105,676.8 |
| 221 | 6.2 | Odabir lokacija |  | 15d | 2022-06-27 | 2022-07-18 | 220 | 15d | 0d |  | Mikko Marcio; Milos Cvetanovic; Dietrich Muller; Johan Schwarzman; Federica Capelluti; Lucio Visconti; Geralind Arbalt; Paul Hermat; John Whiteberg; Nick Johnson; Alphonse LaMartine; Jacquies Lehmans; Johan Guttenbaum; Nikolas Schweinsteiger; Eero Saarinen; Simo Häyhä | 1920h | 48,117.6 |
| 222 | 6.3 | Postavljanje punjaca |  | 45d | 2022-07-18 | 2022-09-19 | 221 | 15d | 0d |  | Mikko Marcio; Milos Cvetanovic; Lucio Visconti; Alphonse LaMartine; Jacquies Lehmans; Johan Guttenbaum; Nikolas Schweinsteiger; Subcontracting [0.1%]; Charger [1600%] | 2520h | 889,149.2 |
| 223 | 6.4 | Instalirana oprema | milestone | 0d | 2022-09-19 | 2022-09-19 | 222 | 158d | 0d |  |  |  |  |
| 224 | 7 | **Integracija sistema** |  | 90d | 2022-08-08 | 2022-12-12 |  | 0d |  |  | Power equipment; HVAC plumbing fire protection; Monitoring security and core networking [0.1%] | 6000h | 295,356.8 |
| 225 | 7.1 | Odabir metoda integracije |  | 30d | 2022-08-08 | 2022-09-19 | 222SS | 0d |  | start no earlier than 2022-08-08 | Siegurd Muller; Dietrich Muller; Johan Schwarzman; Michael Muller; Tarja Halonen | 1200h | 25,200 |
| 226 | 7.2 | Integrisanje |  | 60d | 2022-09-19 | 2022-12-12 | 225 | 0d |  |  | Siegurd Muller; Dietrich Muller; Johan Schwarzman; Michael Muller; David Schlossberg; Garry Taichman; John Whiteberg; Nick Johnson; Eero Saarinen; Simo Häyhä | 4800h | 94,156.8 |
| 227 | 8 | **Razvoj resenja za prevazilazenje pravnih problema** |  | 90d | 2022-09-19 | 2023-01-23 |  | 0d |  |  | Other goods and services [0.1%] | 5280h | 266,364.8 |
| 228 | 8.1 | Utvrdjivanje zakonskih normi koji sprecavaju sirenje infrastrukture |  | 30d | 2022-09-19 | 2022-10-31 | 226SS | 0d |  |  | Geralind Arbalt; Paul Hermat; Jasmina Uzelac; Lucio Visconti; Finn Assink; Lucas Baeert; Johan Baeck; Mike van Diem; Rijk de Gooye | 2160h | 51,540 |
| 229 | 8.2 | Utvrdjivanje nacina za uskladjivanje sa postojecim normama |  | 30d | 2022-10-31 | 2022-12-12 | 228 | 0d |  |  | Geralind Arbalt; Paul Hermat; Lucio Visconti; Finn Assink; Lucas Baeert; Subcontracting [0.1%] | 1200h | 118,850.4 |
| 230 | 8.3 | Pisanje predloga za izmenu postojecih normi |  | 30d | 2022-12-12 | 2023-01-23 | 229 | 0d |  |  | Geralind Arbalt; Paul Hermat; Dietrich Muller; Johan Schwarzman; Finn Assink; Lucas Baeert; John Whiteberg; Nick Johnson | 1920h | 45,974.4 |
| 231 | 9 | **Lab testiranje i testiranje na lokacijama** |  | 90d | 2022-12-12 | 2023-04-17 |  | 0d |  |  | Oprema za testiranje | 7320h | 233,200 |
| 232 | 9.1 | Izrada test plana |  | 15d | 2022-12-12 | 2023-01-02 | 230SS | 0d |  |  | Federica Capelluti; Filip Hadzic; Milos Cvetanovic; Tamara Sekularac; Zaharije Radivojevic; Michael Muller; Lucio Visconti; Giordano Raci | 960h | 13,432.8 |
| 233 | 9.2 | Izvrsavanje pojedinacnih testova |  | 30d | 2023-01-02 | 2023-02-13 | 232 | 6d | 0d |  | Federica Capelluti; Jana Sailovic; Filip Hadzic; Milos Cvetanovic; Tamara Sekularac; Zaharije Radivojevic; Michael Muller; Lucio Visconti; Giordano Raci; Alphonse LaMartine; Jacquies Lehmans; Johan Guttenbaum; Nikolas Schweinsteiger; Mikko Marcio | 3360h | 71,949.6 |
| 234 | 9.3 | Integraciono testiranje |  | 15d | 2023-02-13 | 2023-03-06 | 233 | 6d | 0d |  | Petar Petrovic; Filip Hadzic; Tamara Sekularac; Zaharije Radivojevic; Michael Muller; Lucio Visconti; Giordano Raci; Finn Assink; Geralind Arbalt; Lucas Baeert; Paul Hermat | 1320h | 25,106.4 |
| 235 | 9.4 | Sistemsko testiranje |  | 30d | 2023-03-06 | 2023-04-17 | 234 | 6d | 0d |  | Giordano Raci; Filip Hadzic; Milos Cvetanovic; Tamara Sekularac; Zaharije Radivojevic; Michael Muller; Lucio Visconti | 1680h | 22,711.2 |
| 236 | 9.5 | Zavrseno testiranje celog sistema | milestone | 0d | 2023-04-17 | 2023-04-17 | 235 | 6d | 0d |  |  |  |  |

| ID | WBS | Task | Type | Duration | Start | Finish | Predecessors | Total slack | Constraint | Resources | Work | Cost |
| --- | --- | --- | --- | --- | --- | --- | --- | --- | --- | --- | --- | --- |
| 237 | 10 | **Evaluacija i disiminacija** |  | 88d | 2023-01-02 | 2023-05-04 |  | 0d |  | Other goods and services [0.1%] | 6048h | 183,393.76 |
| 238 | 10.1 | Odabir strategije za disiminaciju |  | 14d | 2023-01-02 | 2023-01-20 | 232 | 0d | start no earlier than 2023-01-02 | Drazen Draskovic; Helmuth Kole; Eero Saarinen; Simo Häyhä; Tarja Halonen; Urho Kekkonen | 672h | 13,245.12 |
| 239 | 10.2 | Izvrsavanje disminacije |  | 60d | 2023-01-20 | 2023-04-14 | 238 | 0d |  | Drazen Draskovic; Helmuth Kole; Rijk de Gooye; Eero Saarinen; Simo Häyhä; Tarja Halonen; Urho Kekkonen | 3360h | 68,284.8 |
| 240 | 10.3 | Unutrasnja evaluacija |  | 14d | 2023-04-14 | 2023-05-04 | 239 | 0d |  | Drazen Draskovic; Helmuth Kole; Paul Hermat; Finn Assink; Geralind Arbalt; Lucas Baeert; Johan Baeck; Mike van Diem | 896h | 21,751.52 |
| 241 | 10.4 | Spoljasnja evaluacija |  | 14d | 2023-04-14 | 2023-05-04 | 239 | 0d |  | Siegurd Muller; David Schlossberg; Garry Taichman; John Whiteberg; Nick Johnson; Alphonse LaMartine; Jacquies Lehmans; Johan Guttenbaum; Mikko Marcio; Nikolas Schweinsteiger | 1120h | 30,112.32 |
| 242 | 10.5 | Kraj projekta | milestone | 0d | 2023-05-04 | 2023-05-04 | 241, 141 | 0d |  |  |  |  |
